# QLDA_Nhom1

Schedule from MS Project, 2021-10-11 to 2022-04-27, costs in $, A marks actual dates.

## Calendars

- Standard: Mon-Fri 08:00-12:00, 13:00-17:00; Sat-Sun off.

## Resources

| Resource | Rate | Cost per use |
| --- | --- | --- |
| Dũng | 15 | 5 |
| Hoàng | 10 | 5 |
| Nam | 10 | 5 |
| Trường | 10 | 5 |

## Schedule

| ID | WBS | Task | Type | Duration | Start | Finish | Predecessors | Complete | Constraint | Resources | Work | Actual work | Cost | Actual cost |
| --- | --- | --- | --- | --- | --- | --- | --- | --- | --- | --- | --- | --- | --- | --- |
| 1 | 1 | **Chuẩn bị dự án** |  | 12d | 2021-10-11 A | 2021-10-26 A |  | 100% |  |  | 176h | 176h | 2,090 | 2,090 |
| 2 | 1.1 | **Khởi tạo dự án** |  | 6d | 2021-10-11 A | 2021-10-18 A |  | 100% |  |  | 64h | 64h | 830 | 830 |
| 3 | 1.1.1 | Xác định mục tiêu dự án | manual | 1d | 2021-10-11 A | 2021-10-11 A |  | 100% |  | Nam; Trường | 16h | 16h | 170 | 170 |
| 4 | 1.1.2 | Xây dựng chiến lược và kế hoạch | manual | 1d | 2021-10-12 A | 2021-10-12 A | 3 | 100% |  | Nam; Trường | 16h | 16h | 170 | 170 |
| 5 | 1.1.3 | Viết tài liệu khởi tạo dự án | manual | 2d | 2021-10-13 A | 2021-10-14 A | 4 | 100% |  | Dũng | 16h | 16h | 245 | 245 |
| 6 | 1.1.4 | Tạo mẫu các loại tài liệu | manual | 2d | 2021-10-15 A | 2021-10-18 A | 5 | 100% |  | Dũng | 16h | 16h | 245 | 245 |
| 7 | 1.2 | Xác định phạm vi | manual | 1d | 2021-10-14 A | 2021-10-14 A |  | 100% | start no earlier than 2021-10-14 | Hoàng | 8h | 8h | 85 | 85 |
| 8 | 1.3 | **Xác định và cài đặt môi trường dự án** |  | 5d | 2021-10-13 A | 2021-10-19 A |  | 100% |  |  | 40h | 40h | 415 | 415 |
| 9 | 1.3.1 | Xác định và cài đặt môi trường sử dụng | manual | 2d | 2021-10-13 A | 2021-10-14 A |  | 100% | start no earlier than 2021-10-13 | Trường | 16h | 16h | 165 | 165 |
| 10 | 1.3.2 | Xác định, cài đặt môi trường và các công cụ phát triển | manual | 2d | 2021-10-15 A | 2021-10-18 A | 9 | 100% |  | Trường | 16h | 16h | 165 | 165 |
| 11 | 1.3.3 | Tổng hợp tài liệu môi trường | manual | 1d | 2021-10-19 A | 2021-10-19 A | 10 | 100% |  | Trường | 8h | 8h | 85 | 85 |
| 12 | 1.4 | **Xác định và phân tích rủi ro** |  | 3d | 2021-10-20 A | 2021-10-22 A | 8 | 100% |  |  | 24h | 24h | 255 | 255 |
| 13 | 1.4.1 | Xác định rủi ro | manual | 1d | 2021-10-20 A | 2021-10-20 A |  | 100% |  | Nam | 8h | 8h | 85 | 85 |
| 14 | 1.4.2 | Phân tích rủi ro | manual | 1d | 2021-10-21 A | 2021-10-21 A | 13 | 100% |  | Nam | 8h | 8h | 85 | 85 |
| 15 | 1.4.3 | Viết tài liệu rủi ro | manual | 1d | 2021-10-22 A | 2021-10-22 A | 14 | 100% |  | Nam | 8h | 8h | 85 | 85 |
| 16 | 1.5 | Tổng hợp tài liệu chuẩn bị dự án | manual | 1d | 2021-10-25 A | 2021-10-25 A | 15 | 100% |  | Dũng; Nam; Hoàng; Trường | 32h | 32h | 380 | 380 |
| 17 | 1.6 | MKS / Chuẩn bị dự án | milestone, manual | 1d | 2021-10-26 A | 2021-10-26 A | 16 | 100% |  | Dũng | 8h | 8h | 125 | 125 |
| 18 | 2 | **Khảo sát** |  | 18d | 2021-10-27 A | 2021-11-19 A |  | 100% |  |  | 552h | 552h | 6,385 | 6,385 |
| 19 | 2.1 | **Khảo sát nghiệp vụ quản lý nhân sự** |  | 8d | 2021-10-27 A | 2021-11-05 A |  | 100% |  |  | 128h | 128h | 1,630 | 1,630 |
| 20 | 2.1.1 | Lập bảng câu hỏi | manual | 2d | 2021-10-27 A | 2021-10-28 A |  | 100% |  | Nam; Dũng | 32h | 32h | 410 | 410 |
| 21 | 2.1.2 | Khảo sát đơn vị về cách quản lý nhân sự qua bảng câu hỏi và hỏi trực tiếp | manual | 3d | 2021-10-29 A | 2021-11-02 A | 20 | 100% |  | Nam; Dũng | 48h | 48h | 610 | 610 |
| 22 | 2.1.3 | Tổng hợp tài liệu về nghiệp vụ quản lý nhân sự | manual | 3d | 2021-11-03 A | 2021-11-05 A | 21 | 100% |  | Nam; Dũng | 48h | 48h | 610 | 610 |
| 23 | 2.2 | **Khảo sát nghiệp vụ chấm công** |  | 8d | 2021-10-27 A | 2021-11-05 A |  | 100% |  |  | 128h | 128h | 1,310 | 1,310 |
| 24 | 2.2.1 | Lập bảng câu hỏi | manual | 2d | 2021-10-27 A | 2021-10-28 A |  | 100% |  | Hoàng; Trường | 32h | 32h | 330 | 330 |
| 25 | 2.2.2 | Khảo sát người quản lý về cách thức tính công qua bảng câu hỏi và hỏi trực tiếp | manual | 3d | 2021-10-29 A | 2021-11-02 A | 24 | 100% |  | Hoàng; Trường | 48h | 48h | 490 | 490 |
| 26 | 2.2.3 | Tổng hợp tài liệu về nghiệp vụ quản lý chấm công | manual | 3d | 2021-11-03 A | 2021-11-05 A | 25 | 100% |  | Hoàng; Trường | 48h | 48h | 490 | 490 |

| ID | WBS | Task | Type | Duration | Start | Finish | Predecessors | Complete | Constraint | Resources | Work | Actual work | Cost | Actual cost |
| --- | --- | --- | --- | --- | --- | --- | --- | --- | --- | --- | --- | --- | --- | --- |
| 27 | 2.3 | **Khảo sát nghiệp vụ quản lý bảng lương** |  | 8d | 2021-11-08 A | 2021-11-17 A |  | 100% |  |  | 128h | 128h | 1,630 | 1,630 |
| 28 | 2.3.1 | Lập bảng câu hỏi | manual | 2d | 2021-11-08 A | 2021-11-09 A |  | 100% |  | Nam; Dũng | 32h | 32h | 410 | 410 |
| 29 | 2.3.2 | Khảo sát đơn vị về cách thức tính lương qua bảng câu hỏi và hỏi trực tiếp | manual | 3d | 2021-11-10 A | 2021-11-12 A | 28 | 100% |  | Nam; Dũng | 48h | 48h | 610 | 610 |
| 30 | 2.3.3 | Tổng hợp tài liệu về nghiệp vụ quản lý bảng lương | manual | 3d | 2021-11-15 A | 2021-11-17 A | 29 | 100% |  | Nam; Dũng | 48h | 48h | 610 | 610 |
| 31 | 2.4 | **Khảo sát nghiệp vụ báo cáo, thống kê** |  | 8d | 2021-11-08 A | 2021-11-17 A |  | 100% |  |  | 128h | 128h | 1,310 | 1,310 |
| 32 | 2.4.1 | Lập bảng câu hỏi | manual | 2d | 2021-11-08 A | 2021-11-09 A |  | 100% |  | Hoàng; Trường | 32h | 32h | 330 | 330 |
| 33 | 2.4.2 | Khảo sát đơn vị về cách thức lập báo cáo, thống kê | manual | 3d | 2021-11-10 A | 2021-11-12 A | 32 | 100% |  | Hoàng; Trường | 48h | 48h | 490 | 490 |
| 34 | 2.4.3 | Tổng hợp tài liệu về nghiệp vụ báo cáo, thống kê | manual | 3d | 2021-11-15 A | 2021-11-17 A | 33 | 100% |  | Hoàng; Trường | 48h | 48h | 490 | 490 |
| 35 | 2.5 | Tổng hợp tài liệu khảo sát | manual | 1d | 2021-11-18 A | 2021-11-18 A | 31 | 100% |  | Dũng; Hoàng; Nam; Trường | 32h | 32h | 380 | 380 |
| 36 | 2.6 | MKS / Khảo sát nghiệp vụ | milestone, manual | 1d | 2021-11-19 A | 2021-11-19 A | 35 | 100% | start no earlier than 2021-11-19 | Dũng | 8h | 8h | 125 | 125 |
| 37 | 3 | **Phân tích** |  | 13d | 2021-11-22 A | 2021-12-08 A |  | 100% |  |  | 376h | 376h | 4,380 | 4,380 |
| 38 | 3.1 | **Mô hình hóa quy trình nghiệp vụ** |  | 5d | 2021-11-22 A | 2021-11-26 A |  | 100% |  |  | 80h | 80h | 1,050 | 1,050 |
| 39 | 3.1.1 | Mô hình hóa quy trình nghiệp vụ quản lý nhân sự | manual | 1d | 2021-11-22 A | 2021-11-22 A |  | 100% |  | Dũng; Nam | 16h | 16h | 210 | 210 |
| 40 | 3.1.2 | Mô hình hóa quy trình nghiệp vụ chấm công | manual | 1d | 2021-11-23 A | 2021-11-23 A |  | 100% |  | Dũng; Nam | 16h | 16h | 210 | 210 |
| 41 | 3.1.3 | Mô hình hóa quy trình nghiệp vụ quản lý bảng lương | manual | 1d | 2021-11-24 A | 2021-11-24 A |  | 100% |  | Dũng; Nam | 16h | 16h | 210 | 210 |
| 42 | 3.1.4 | Mô hình hóa quy trình nghiệp vụ báo cáo, thống kê | manual | 1d | 2021-11-25 A | 2021-11-25 A |  | 100% |  | Dũng; Nam | 16h | 16h | 210 | 210 |
| 43 | 3.1.5 | Tổng hợp tài liệu mô hình hóa quy trình nghiệp vụ | manual | 1d | 2021-11-26 A | 2021-11-26 A |  | 100% |  | Dũng; Nam | 16h | 16h | 210 | 210 |
| 44 | 3.2 | **Liệt kê các chức năng chính và xây dựng sơ đồ tổng quan các chức năng, sơ đồ luồng công việc** |  | 5d | 2021-11-22 A | 2021-11-26 A |  | 100% |  |  | 80h | 80h | 850 | 850 |
| 45 | 3.2.1 | Nghiệp vụ quản lý nhân sự | manual | 1d | 2021-11-22 A | 2021-11-22 A |  | 100% |  | Hoàng; Trường | 16h | 16h | 170 | 170 |
| 46 | 3.2.2 | Nghiệp vụ quản lý chấm công | manual | 1d | 2021-11-23 A | 2021-11-23 A |  | 100% |  | Hoàng; Trường | 16h | 16h | 170 | 170 |
| 47 | 3.2.3 | Nghiệp vụ quản lý bảng lương | manual | 1d | 2021-11-24 A | 2021-11-24 A |  | 100% |  | Hoàng; Trường | 16h | 16h | 170 | 170 |
| 48 | 3.2.4 | Nghiệp vụ báo cáo, thống kê | manual | 1d | 2021-11-25 A | 2021-11-25 A |  | 100% |  | Hoàng; Trường | 16h | 16h | 170 | 170 |
| 49 | 3.2.5 | Tổng hợp tài liệu các sơ đồ tổng quan chức năng và luồng công việc | manual | 1d | 2021-11-26 A | 2021-11-26 A |  | 100% |  | Hoàng; Trường | 16h | 16h | 170 | 170 |
| 50 | 3.3 | **Mô tả các tác nhân, thực thể, các chức năng chính** |  | 2d | 2021-11-29 A | 2021-11-30 A |  | 100% |  |  | 64h | 64h | 760 | 760 |
| 51 | 3.3.1 | Nghiệp vụ quản lý nhân sự | manual | 1d | 2021-11-29 A | 2021-11-29 A |  | 100% |  | Dũng | 8h | 8h | 125 | 125 |
| 52 | 3.3.2 | Nghiệp vụ quản lý chấm công | manual | 1d | 2021-11-29 A | 2021-11-29 A |  | 100% |  | Hoàng | 8h | 8h | 85 | 85 |
| 53 | 3.3.3 | Nghiệp vụ quản lý bảng lương | manual | 1d | 2021-11-29 A | 2021-11-29 A |  | 100% |  | Nam | 8h | 8h | 85 | 85 |
| 54 | 3.3.4 | Nghiệp vụ báo cáo, thống kê | manual | 1d | 2021-11-29 A | 2021-11-29 A |  | 100% |  | Trường | 8h | 8h | 85 | 85 |
| 55 | 3.3.5 | Tổng hợp tài liệu mô tả các tác nhân, thực thể, các chức năng chính | manual | 1d | 2021-11-30 A | 2021-11-30 A |  | 100% |  | Trường; Dũng; Nam; Hoàng | 32h | 32h | 380 | 380 |

| ID | WBS | Task | Type | Duration | Start | Finish | Predecessors | Complete | Constraint | Resources | Work | Actual work | Cost | Actual cost |
| --- | --- | --- | --- | --- | --- | --- | --- | --- | --- | --- | --- | --- | --- | --- |
| 56 | 3.4 | **Đặc tả các chức năng chính của phần mềm và viết tài liệu đặc tả** |  | 2d | 2021-12-01 A | 2021-12-02 A |  | 100% |  |  | 64h | 64h | 760 | 760 |
| 57 | 3.4.1 | Nghiệp vụ quản lý nhân sự | manual | 1d | 2021-12-01 A | 2021-12-01 A |  | 100% |  | Dũng | 8h | 8h | 125 | 125 |
| 58 | 3.4.2 | Nghiệp vụ quản lý chấm công | manual | 1d | 2021-12-01 A | 2021-12-01 A |  | 100% |  | Hoàng | 8h | 8h | 85 | 85 |
| 59 | 3.4.3 | Nghiệp vụ quản lý bảng lương | manual | 1d | 2021-12-01 A | 2021-12-01 A |  | 100% |  | Nam | 8h | 8h | 85 | 85 |
| 60 | 3.4.4 | Nghiệp vụ báo cáo, thống kê | manual | 1d | 2021-12-01 A | 2021-12-01 A |  | 100% |  | Trường | 8h | 8h | 85 | 85 |
| 61 | 3.4.5 | Tổng hợp tài liệu đặc tả chức năng | manual | 1d | 2021-12-02 A | 2021-12-02 A |  | 100% |  | Hoàng; Trường; Dũng; Nam | 32h | 32h | 380 | 380 |
| 62 | 3.5 | Lựa chọn kiến trúc phần mềm, cơ sở dữ liệu | manual | 2d | 2021-12-03 A | 2021-12-06 A |  | 100% | start no earlier than 2021-12-03 | Nam; Hoàng; Trường | 48h | 48h | 495 | 495 |
| 63 | 3.6 | Tổng hợp tài liệu phân tích | manual | 1d | 2021-12-07 A | 2021-12-07 A | 62 | 100% |  | Dũng; Hoàng; Nam; Trường | 32h | 32h | 380 | 380 |
| 64 | 3.7 | MKS / Phân tích nghiệp vụ | milestone, manual | 1d | 2021-12-08 A | 2021-12-08 A |  | 100% |  | Hoàng | 8h | 8h | 85 | 85 |
| 65 | 4 | **Thiết kế phần mềm** |  | 16d | 2021-12-09 A | 2021-12-30 A |  | 100% |  |  | 488h | 488h | 5,725 | 5,725 |
| 66 | 4.1 | **Thiết kế sơ đồ lớp phân tích các chức năng** |  | 5d | 2021-12-09 A | 2021-12-15 A |  | 100% |  |  | 80h | 80h | 1,050 | 1,050 |
| 67 | 4.1.1 | Nghiệp vụ quản lý nhân sự | manual | 1d | 2021-12-09 A | 2021-12-09 A |  | 100% |  | Dũng; Nam | 16h | 16h | 210 | 210 |
| 68 | 4.1.2 | Nghiệp vụ quản lý chấm công | manual | 1d | 2021-12-10 A | 2021-12-10 A | 67 | 100% |  | Dũng; Nam | 16h | 16h | 210 | 210 |
| 69 | 4.1.3 | Nghiệp vụ quản lý bảng lương | manual | 1d | 2021-12-13 A | 2021-12-13 A | 68 | 100% |  | Dũng; Nam | 16h | 16h | 210 | 210 |
| 70 | 4.1.4 | Nghiệp vụ báo cáo, thống kê | manual | 1d | 2021-12-14 A | 2021-12-14 A | 69 | 100% |  | Dũng; Nam | 16h | 16h | 210 | 210 |
| 71 | 4.1.5 | Tổng hợp tài liệu thiết kế sơ đồ lớp phân tích | manual | 1d | 2021-12-15 A | 2021-12-15 A | 70 | 100% |  | Dũng; Nam | 16h | 16h | 210 | 210 |
| 72 | 4.2 | **Thiết kế sơ đồ trình tự cho các chức năng** |  | 5d | 2021-12-09 A | 2021-12-15 A |  | 100% |  |  | 80h | 80h | 850 | 850 |
| 73 | 4.2.1 | Nghiệp vụ quản lý nhân sự | manual | 1d | 2021-12-09 A | 2021-12-09 A |  | 100% |  | Hoàng; Trường | 16h | 16h | 170 | 170 |
| 74 | 4.2.2 | Nghiệp vụ quản lý chấm công | manual | 1d | 2021-12-10 A | 2021-12-10 A | 73 | 100% |  | Hoàng; Trường | 16h | 16h | 170 | 170 |
| 75 | 4.2.3 | Nghiệp vụ quản lý bảng lương | manual | 1d | 2021-12-13 A | 2021-12-13 A | 74 | 100% |  | Hoàng; Trường | 16h | 16h | 170 | 170 |
| 76 | 4.2.4 | Nghiệp vụ báo cáo, thống kê | manual | 1d | 2021-12-14 A | 2021-12-14 A | 75 | 100% |  | Trường; Hoàng | 16h | 16h | 170 | 170 |
| 77 | 4.2.5 | Tổng hợp tài liệu thiết kế sơ đồ trình tự | manual | 1d | 2021-12-15 A | 2021-12-15 A | 76 | 100% |  | Hoàng; Trường | 16h | 16h | 170 | 170 |
| 78 | 4.3 | **Thiết kế sơ đồ lớp chi tiết các chức năng** |  | 3d | 2021-12-16 A | 2021-12-20 A |  | 100% |  |  | 96h | 96h | 1,120 | 1,120 |
| 79 | 4.3.1 | Nghiệp vụ quản lý nhân sự | manual | 2d | 2021-12-16 A | 2021-12-17 A |  | 100% |  | Dũng | 16h | 16h | 245 | 245 |
| 80 | 4.3.2 | Nghiệp vụ quản lý chấm công | manual | 2d | 2021-12-16 A | 2021-12-17 A |  | 100% |  | Hoàng | 16h | 16h | 165 | 165 |
| 81 | 4.3.3 | Nghiệp vụ quản lý bảng lương | manual | 2d | 2021-12-16 A | 2021-12-17 A |  | 100% |  | Nam | 16h | 16h | 165 | 165 |
| 82 | 4.3.4 | Nghiệp vụ báo cáo, thống kê | manual | 2d | 2021-12-16 A | 2021-12-17 A |  | 100% |  | Trường | 16h | 16h | 165 | 165 |
| 83 | 4.3.5 | Tổng hợp tài liệu thiết kế sơ đồ chi tiết | manual | 1d | 2021-12-20 A | 2021-12-20 A | 82 | 100% |  | Dũng; Nam; Hoàng; Trường | 32h | 32h | 380 | 380 |

| ID | WBS | Task | Type | Duration | Start | Finish | Predecessors | Complete | Resources | Work | Actual work | Cost | Actual cost |
| --- | --- | --- | --- | --- | --- | --- | --- | --- | --- | --- | --- | --- | --- |
| 84 | 4.4 | **Thiết kế cơ sở dữ liệu** |  | 3d | 2021-12-21 A | 2021-12-23 A | 78 | 100% |  | 96h | 96h | 1,120 | 1,120 |
| 85 | 4.4.1 | Nghiệp vụ quản lý nhân sự | manual | 2d | 2021-12-21 A | 2021-12-22 A |  | 100% | Dũng | 16h | 16h | 245 | 245 |
| 86 | 4.4.2 | Nghiệp vụ quản lý chấm công | manual | 2d | 2021-12-21 A | 2021-12-22 A |  | 100% | Hoàng | 16h | 16h | 165 | 165 |
| 87 | 4.4.3 | Nghiệp vụ quản lý bảng lương | manual | 2d | 2021-12-21 A | 2021-12-22 A |  | 100% | Nam | 16h | 16h | 165 | 165 |
| 88 | 4.4.4 | Nghiệp vụ báo cáo, thống kê | manual | 2d | 2021-12-21 A | 2021-12-22 A |  | 100% | Trường | 16h | 16h | 165 | 165 |
| 89 | 4.4.5 | Tổng hợp tài liệu thiết kế cơ sở dữ liệu | manual | 1d | 2021-12-23 A | 2021-12-23 A | 88 | 100% | Dũng; Hoàng; Nam; Trường | 32h | 32h | 380 | 380 |
| 90 | 4.5 | **Thiết kế giao diện** |  | 3d | 2021-12-24 A | 2021-12-28 A |  | 100% |  | 96h | 96h | 1,120 | 1,120 |
| 91 | 4.5.1 | Nghiệp vụ quản lý nhân sự | manual | 2d | 2021-12-24 A | 2021-12-27 A |  | 100% | Dũng | 16h | 16h | 245 | 245 |
| 92 | 4.5.2 | Nghiệp vụ quản lý chấm công | manual | 2d | 2021-12-24 A | 2021-12-27 A |  | 100% | Hoàng | 16h | 16h | 165 | 165 |
| 93 | 4.5.3 | Nghiệp vụ quản lý bảng lương | manual | 2d | 2021-12-24 A | 2021-12-27 A |  | 100% | Nam | 16h | 16h | 165 | 165 |
| 94 | 4.5.4 | Nghiệp vụ báo cáo, thống kê | manual | 2d | 2021-12-24 A | 2021-12-27 A |  | 100% | Trường | 16h | 16h | 165 | 165 |
| 95 | 4.5.5 | Tổng hợp tài liệu thiết kế giao diện | manual | 1d | 2021-12-28 A | 2021-12-28 A | 94 | 100% | Trường; Dũng; Hoàng; Nam | 32h | 32h | 380 | 380 |
| 96 | 4.6 | Tổng hợp tài liệu thiết kế hệ thống | manual | 1d | 2021-12-29 A | 2021-12-29 A |  | 100% | Hoàng; Dũng; Nam; Trường | 32h | 32h | 380 | 380 |
| 97 | 4.7 | MKS / Thiết kế CSDL, giao diện và các chức năng | milestone, manual | 1d | 2021-12-30 A | 2021-12-30 A | 96 | 100% | Hoàng | 8h | 8h | 85 | 85 |
| 98 | 5 | **Xây dựng phần mềm** |  | 29d | 2022-01-03 A | 2022-02-10 A |  | 100% |  | 728h | 728h | 8,390 | 8,390 |
| 99 | 5.1 | **Xây dựng cơ sở dữ liệu** |  | 5d | 2022-01-03 A | 2022-01-07 A |  | 100% |  | 80h | 80h | 850 | 850 |
| 100 | 5.1.1 | Nghiệp vụ quản lý nhân sự | manual | 1d | 2022-01-03 A | 2022-01-03 A |  | 100% | Hoàng; Trường | 16h | 16h | 170 | 170 |
| 101 | 5.1.2 | Nghiệp vụ quản lý chấm công | manual | 1d | 2022-01-04 A | 2022-01-04 A | 100 | 100% | Hoàng; Trường | 16h | 16h | 170 | 170 |
| 102 | 5.1.3 | Nghiệp vụ quản lý bảng lương | manual | 1d | 2022-01-05 A | 2022-01-05 A | 101 | 100% | Hoàng; Trường | 16h | 16h | 170 | 170 |
| 103 | 5.1.4 | Nghiệp vụ báo cáo, thống kê | manual | 1d | 2022-01-06 A | 2022-01-06 A | 102 | 100% | Hoàng; Trường | 16h | 16h | 170 | 170 |
| 104 | 5.1.5 | Tổng hợp tài liệu xây dựng cơ sở dữ liệu | manual | 1d | 2022-01-07 A | 2022-01-07 A | 103 | 100% | Trường; Hoàng | 16h | 16h | 170 | 170 |
| 105 | 5.2 | **Xây dựng giao diện** |  | 14d | 2022-01-10 A | 2022-01-27 A |  | 100% |  | 224h | 224h | 2,290 | 2,290 |
| 106 | 5.2.1 | Nghiệp vụ quản lý nhân sự | manual | 3d | 2022-01-10 A | 2022-01-12 A |  | 100% | Trường; Hoàng | 48h | 48h | 490 | 490 |
| 107 | 5.2.2 | Nghiệp vụ quản lý chấm công | manual | 3d | 2022-01-13 A | 2022-01-17 A | 106 | 100% | Trường; Hoàng | 48h | 48h | 490 | 490 |
| 108 | 5.2.3 | Nghiệp vụ quản lý bảng lương | manual | 3d | 2022-01-18 A | 2022-01-20 A | 107 | 100% | Trường; Hoàng | 48h | 48h | 490 | 490 |
| 109 | 5.2.4 | Nghiệp vụ báo cáo, thống kê | manual | 3d | 2022-01-21 A | 2022-01-25 A | 108 | 100% | Hoàng; Trường | 48h | 48h | 490 | 490 |
| 110 | 5.2.5 | Tổng hợp tài liệu xây dựng giao diện | manual | 2d | 2022-01-26 A | 2022-01-27 A | 109 | 100% | Hoàng; Trường | 32h | 32h | 330 | 330 |

| ID | WBS | Task | Type | Duration | Start | Finish | Predecessors | Complete | Constraint | Resources | Work | Actual work | Cost | Actual cost |
| --- | --- | --- | --- | --- | --- | --- | --- | --- | --- | --- | --- | --- | --- | --- |
| 111 | 5.3 | **Xây dựng chức năng** |  | 19d | 2022-01-10 A | 2022-02-03 A |  | 100% |  |  | 304h | 304h | 3,850 | 3,850 |
| 112 | 5.3.1 | Nghiệp vụ quản lý nhân sự | manual | 4d | 2022-01-10 A | 2022-01-13 A |  | 100% |  | Nam; Dũng | 64h | 64h | 810 | 810 |
| 113 | 5.3.2 | Nghiệp vụ quản lý chấm công | manual | 4d | 2022-01-14 A | 2022-01-19 A | 112 | 100% |  | Nam; Dũng | 64h | 64h | 810 | 810 |
| 114 | 5.3.3 | Nghiệp vụ quản lý bảng lương | manual | 4d | 2022-01-20 A | 2022-01-25 A | 113 | 100% |  | Nam; Dũng | 64h | 64h | 810 | 810 |
| 115 | 5.3.4 | Nghiệp vụ báo cáo, thống kê | manual | 4d | 2022-01-26 A | 2022-01-31 A | 114 | 100% |  | Dũng; Nam | 64h | 64h | 810 | 810 |
| 116 | 5.3.5 | Tổng hợp tài liệu xây dựng chức năng | manual | 3d | 2022-02-01 A | 2022-02-03 A | 115 | 100% |  | Dũng; Nam | 48h | 48h | 610 | 610 |
| 117 | 5.4 | Ghép các module chương trình để tạo một chương trình hoàn chỉnh | manual | 2d | 2022-02-04 A | 2022-02-07 A |  | 100% | start no earlier than 2022-02-04 | Dũng; Hoàng; Nam; Trường | 64h | 64h | 740 | 740 |
| 118 | 5.5 | Viết tài liệu xây dựng phần mềm | manual | 2d | 2022-02-08 A | 2022-02-09 A |  | 100% |  | Hoàng; Trường; Dũng | 48h | 48h | 575 | 575 |
| 119 | 5.6 | MKS / Lập trình giao diện và các chức năng | milestone, manual | 1d | 2022-02-10 A | 2022-02-10 A |  | 100% |  | Nam | 8h | 8h | 85 | 85 |
| 120 | 6 | **Kiểm thử phần mềm** |  | 46d | 2022-02-11 A | 2022-04-15 A |  | 100% |  |  | 1240h | 1240h | 13,900 | 13,900 |
| 121 | 6.1 | Tạo kịch bản test và testcase | manual | 15d | 2022-02-11 A | 2022-03-03 A |  | 100% |  | Dũng; Hoàng; Nam; Trường | 480h | 480h | 5,420 | 5,420 |
| 122 | 6.2 | Kiểm thử giao diện | manual | 4d | 2022-03-04 A | 2022-03-09 A | 121 | 100% |  | Hoàng | 32h | 32h | 325 | 325 |
| 123 | 6.3 | Kiểm thử validate | manual | 4d | 2022-03-04 A | 2022-03-09 A |  | 100% |  | Trường | 32h | 32h | 325 | 325 |
| 124 | 6.4 | Kiểm thử chức năng | manual | 8d | 2022-03-10 A | 2022-03-21 A | 123 | 100% |  | Dũng; Nam | 128h | 128h | 1,610 | 1,610 |
| 125 | 6.5 | Kiểm thử bảo mật | manual | 2d | 2022-03-10 A | 2022-03-11 A |  | 100% |  | Hoàng | 16h | 16h | 165 | 165 |
| 126 | 6.6 | Kiểm thử tích hợp | manual | 8d | 2022-03-14 A | 2022-03-23 A | 125 | 100% |  | Trường; Hoàng | 128h | 128h | 1,290 | 1,290 |
| 127 | 6.7 | Sửa lỗi | manual | 10d | 2022-03-24 A | 2022-04-06 A |  | 100% |  | Trường; Nam; Dũng; Hoàng | 320h | 320h | 3,620 | 3,620 |
| 128 | 6.8 | Kiểm thử và khắc phục lỗi | manual | 4d | 2022-04-07 A | 2022-04-12 A | 127 | 100% |  | Trường; Hoàng | 64h | 64h | 650 | 650 |
| 129 | 6.9 | Tổng hợp tài liệu kiểm thử | manual | 2d | 2022-04-13 A | 2022-04-14 A | 128 | 100% |  | Dũng; Nam | 32h | 32h | 410 | 410 |
| 130 | 6.10 | MKS / Kiểm thử phần mềm | milestone, manual | 1d | 2022-04-15 A | 2022-04-15 A | 129 | 100% |  | Trường | 8h | 8h | 85 | 85 |
| 131 | 7 | **Triển khai phần mềm** |  | 7d | 2022-04-18 A | 2022-04-26 A |  | 100% |  |  | 88h | 88h | 990 | 990 |
| 132 | 7.1 | Cài đặt phần mềm | manual | 2d | 2022-04-18 A | 2022-04-19 A |  | 100% |  | Hoàng; Trường | 32h | 32h | 330 | 330 |
| 133 | 7.2 | Hướng dẫn sử dụng | manual | 2d | 2022-04-20 A | 2022-04-21 A | 132 | 100% |  | Nam | 16h | 16h | 165 | 165 |
| 134 | 7.3 | Viết tài liệu triển khai | manual | 2d | 2022-04-22 A | 2022-04-25 A | 133 | 100% |  | Dũng; Trường | 32h | 32h | 410 | 410 |
| 135 | 7.4 | MKS / Triển khai phần mềm | milestone, manual | 1d | 2022-04-26 A | 2022-04-26 A | 134 | 100% |  | Nam | 8h | 8h | 85 | 85 |
| 136 | 8 | MKS / Hoàn thành dự án | milestone, manual | 1d | 2022-04-27 A | 2022-04-27 A |  | 100% |  | Dũng | 8h | 8h | 125 | 125 |
